# Создание программного комплекса

Schedule from MS Project, 2026-04-06 to 2026-07-14, status date 2026-06-02, costs in ₽, A marks actual dates.

## Calendars

- Стандартный: Mon-Fri 09:00-13:00, 14:00-18:00; Sat-Sun off. Exceptions (off unless hours are given): 2026-04-21 to 2031-05-13 12:00-13:00, 14:00-18:00 (Профилактика оборудования, recurring), 2026-04-30 09:00-13:00, 14:00-17:00 (Сокр. День перед 1 мая), 2026-05-01 (1 Мая), 2026-05-08 09:00-13:00, 14:00-17:00 (Сокр. День перед 9 мая), 2026-05-11 (9 Мая (перенос)), 2026-06-11 09:00-13:00, 14:00-17:00 (Сокр. День перед 12 июня), 2026-06-12 (12 Июня).

## Resources

| Resource | Group | Unit | Rate | Cost per use |
| --- | --- | --- | --- | --- |
| Аналитик |  |  | 500 |  |
| Ведущий программист | Программисты |  | 437.5 |  |
| Программист 1 | Программисты |  | 312.5 |  |
| Программист 2 | Программисты |  | 312.5 |  |
| Программист 3 | Программисты |  | 312.5 |  |
| Технический писатель |  |  | 250 |  |
| Наборщики данных | Технический персонал |  | 218.75 |  |
| Сервер базы данных | Оборудование |  | 25000 | 10000 |
| Картриджи для принтера | Расходные материалы | Шт | 2500 |  |
| Бумага | Расходные материалы | Пач | 200 |  |
| Профилактика |  | Обсл | 3000 |  |

## Schedule

| ID | WBS | Task | Type | Duration | Start | Finish | Predecessors | Complete | Remaining | Baseline start | Baseline finish | Baseline duration | Total slack | Free slack | Constraint | Resources | Work | Actual work | Cost | Baseline cost | Actual cost |
| --- | --- | --- | --- | --- | --- | --- | --- | --- | --- | --- | --- | --- | --- | --- | --- | --- | --- | --- | --- | --- | --- |
| 1 | 1 | Начало реализации проекта | milestone | 0d | 2026-04-06 A | 2026-04-06 A |  | 100% |  | 2026-04-06 | 2026-04-06 | 0d |  |  |  |  |  |  |  |  |  |
| 2 | 2 | **Программирование** |  | 29.5d | 2026-04-07 A | 2026-05-21 A |  | 100% |  | 2026-04-07 | 2026-05-20 | 28.54d |  |  |  | Сервер базы данных | 856h | 856h | 343,028.89 | 322,884.62 | 343,028.89 |
| 3 | 2.1 | Постановка задачи |  | 5d | 2026-04-07 A | 2026-04-13 A | 1FS+1d | 100% |  | 2026-04-07 | 2026-04-13 | 5d |  |  |  | Аналитик; Ведущий программист | 80h | 80h | 37,500 | 37,500 | 37,500 |
| 4 | 2.2 | Разработка интерфейса |  | 10d | 2026-04-14 A | 2026-04-28 A | 3 | 100% |  | 2026-04-14 | 2026-04-28 | 10d |  |  |  | Ведущий программист; Программист 1 | 160h | 160h | 60,000 | 60,000 | 60,000 |
| 5 | 2.3 | Разработка модулей обработки данных |  | 14.5d | 2026-04-28 A | 2026-05-21 A | 4 | 100% |  | 2026-04-28 | 2026-05-14 | 9.04d |  |  |  | Ведущий программист; Программист 2; Программист 3 | 240h | 240h | 89,519.27 | 82,500 | 89,519.27 |
| 6 | 2.4 | Разработа базы данных |  | 11.54d | 2026-04-14 A | 2026-04-29 A | 3 | 100% |  | 2026-04-14 | 2026-04-29 | 11.54d |  |  |  | Аналитик; Программист 2; Программист 3 | 240h | 240h | 85,384.62 | 85,384.62 | 85,384.62 |
| 7 | 2.5 | Заполнение базы данных |  | 12d | 2026-04-29 A | 2026-05-20 A | 6 | 100% |  | 2026-04-29 | 2026-05-20 | 12d |  |  |  | Наборщики данных | 96h | 96h | 21,000 | 21,000 | 21,000 |
| 8 | 2.6 | Разработка интеграции |  | 5d | 2026-04-28 A | 2026-05-06 A |  | 100% |  |  |  |  |  |  | start no earlier than 2026-04-22 | Программист 1 | 40h | 40h | 13,125 |  | 13,125 |
| 9 | 3 | Программирование завершено | milestone | 0d | 2026-05-21 A | 2026-05-21 A | 5, 7, 8 | 100% |  | 2026-05-20 | 2026-05-20 | 0d |  |  |  |  |  |  |  |  |  |
| 10 | 4 | **Тестирование и отладка** |  | 19.61d | 2026-05-14 A | 2026-06-11 |  | 65% | 6.95d | 2026-05-13 | 2026-06-01 | 12.74d | 20.39d |  |  |  | 380h | 160.38h | 142,584.82 | 113,738.1 | 61,593.1 |
| 11 | 4.1 | Подготовка тестовых наборов данных |  | 10d | 2026-05-14 A | 2026-05-29 A | 9FS-5d | 100% |  | 2026-05-13 | 2026-05-21 | 5.24d |  |  |  | Программист 1; Ведущий программист | 80h | 80h | 31,428.57 | 30,238.1 | 31,428.57 |
| 12 | 4.2 | Тестирование и исправление ошибок |  | 9.38d | 2026-05-29 A | 2026-06-11 | 11 | 27% | 6.86d | 2026-05-21 | 2026-06-01 | 7.5d | 20.39d | 0d |  | Ведущий программист; Программист 2; Программист 1; Программист 3 | 300h | 80.38h | 110,156.25 | 82,500 | 29,514.53 |
| 13 | 5 | Отладка завершена | milestone | 0d | 2026-06-11 | 2026-06-11 | 12 |  |  | 2026-06-01 | 2026-06-01 | 0d | 20.39d |  |  |  |  |  |  |  |  |
| 14 | 6 | **Разработка документации** |  | 25d | 2026-06-05 | 2026-07-14 |  |  |  | 2026-06-04 | 2026-07-13 | 25d | 0d |  |  | Бумага [0.01 Пач]; Картриджи для принтера [0.01 Шт] | 200h |  | 56,500 | 56,500 |  |
| 15 | 6.1 | Составление программной документации |  | 10d | 2026-06-05 | 2026-06-22 | 9SS+10d |  |  | 2026-06-04 | 2026-06-19 | 10d | 0d |  |  | Технический писатель | 80h |  | 20,000 | 20,000 |  |
| 16 | 6.2 | Составление пользовательской документации |  | 15d | 2026-06-22 | 2026-07-14 | 15 |  |  | 2026-06-19 | 2026-07-13 | 15d | 0d |  |  | Технический писатель | 120h |  | 30,000 | 30,000 |  |
| 17 | 7 | Конец проекта | milestone | 0d | 2026-07-14 | 2026-07-14 | 16 |  |  | 2026-07-13 | 2026-07-13 | 0d | 0d |  |  |  |  |  |  |  |  |
| 18 | 8 | **Профилактика оборудования** |  | 44.75d | 2026-04-21 A | 2026-06-30 |  | 67% | 14.92d | 2026-04-21 | 2026-06-30 | 44.75d | 0d |  |  |  |  |  | 18,000 | 18,000 | 12,000 |
| 19 | 8.1 | Профилактика оборудования 1 | manual | 3h | 2026-04-21 A | 2026-04-21 A |  | 100% |  | 2026-04-21 | 2026-04-21 | 3h |  |  | start no earlier than 2026-04-21 | Профилактика [1 Обсл] |  |  | 3,000 | 3,000 | 3,000 |
| 20 | 8.2 | Профилактика оборудования 2 | manual | 3h | 2026-05-05 A | 2026-05-05 A |  | 100% |  | 2026-05-05 | 2026-05-05 | 3h |  |  | start no earlier than 2026-05-05 | Профилактика [1 Обсл] |  |  | 3,000 | 3,000 | 3,000 |
| 21 | 8.3 | Профилактика оборудования 3 | manual | 3h | 2026-05-19 A | 2026-05-19 A |  | 100% |  | 2026-05-19 | 2026-05-19 | 3h |  |  | start no earlier than 2026-05-19 | Профилактика [1 Обсл] |  |  | 3,000 | 3,000 | 3,000 |
| 22 | 8.4 | Профилактика оборудования 4 | manual | 3h | 2026-06-02 A | 2026-06-02 A |  | 100% |  | 2026-06-02 | 2026-06-02 | 3h |  |  | start no earlier than 2026-06-02 | Профилактика [1 Обсл] |  |  | 3,000 | 3,000 | 3,000 |
| 23 | 8.5 | Профилактика оборудования 5 | manual | 3h | 2026-06-16 | 2026-06-16 |  |  |  | 2026-06-16 | 2026-06-16 | 3h |  |  | start no earlier than 2026-06-16 | Профилактика [1 Обсл] |  |  | 3,000 | 3,000 |  |
| 24 | 8.6 | Профилактика оборудования 6 | manual | 3h | 2026-06-30 | 2026-06-30 |  |  |  | 2026-06-30 | 2026-06-30 | 3h |  |  | start no earlier than 2026-06-30 | Профилактика [1 Обсл] |  |  | 3,000 | 3,000 |  |
