# Создание программного комплекса

Schedule from MS Project, 2026-04-06 to 2026-07-14, costs in ₽.

## Calendars

- Стандартный: Mon-Fri 09:00-13:00, 14:00-18:00; Sat-Sun off. Exceptions (off unless hours are given): 2026-04-30 09:00-13:00, 14:00-17:00 (Сокр. День перед 1 мая), 2026-05-01 (1 Мая), 2026-05-08 09:00-13:00, 14:00-17:00 (Сокр. День перед 9 мая), 2026-05-11 (9 Мая (перенос)), 2026-06-11 09:00-13:00, 14:00-17:00 (Сокр. День перед 12 июня), 2026-06-12 (12 Июня).

## Resources

| Resource | Group | Unit | Rate | Cost per use |
| --- | --- | --- | --- | --- |
| Аналитик |  |  | 500 |  |
| Ведущий программист | Программисты |  | 437.5 |  |
| Программист 1 | Программисты |  | 312.5 |  |
| Программист 2 | Программисты |  | 312.5 |  |
| Программист 3 | Программисты |  | 312.5 |  |
| Технический писатель |  |  | 250 |  |
| Наборщики данных | Технический персонал |  | 218.75 |  |
| Сервер базы данных | Оборудование |  | 25000 | 10000 |
| Картриджи для принтера | Расходные материалы | Шт | 2500 |  |
| Бумага | Расходные материалы | Пач | 200 |  |

## Schedule

| ID | WBS | Task | Type | Duration | Start | Finish | Predecessors | Total slack | Free slack | Resources | Work | Cost |
| --- | --- | --- | --- | --- | --- | --- | --- | --- | --- | --- | --- | --- |
| 1 | 1 | Начало реализации проекта | milestone | 0d | 2026-04-06 | 2026-04-06 |  | 0d |  |  |  |  |
| 2 | 2 | **Программирование** |  | 32d | 2026-04-07 | 2026-05-25 |  | 0d |  | Сервер базы данных | 816h | 327,500 |
| 3 | 2.1 | Постановка задачи |  | 5d | 2026-04-07 | 2026-04-13 | 1FS+1d | 0d |  | Аналитик; Ведущий программист | 80h | 37,500 |
| 4 | 2.2 | Разработка интерфейса |  | 10d | 2026-04-14 | 2026-04-27 | 3 | 2d | 0d | Ведущий программист; Программист 1 | 160h | 60,000 |
| 5 | 2.3 | Разработка модулей обработки данных |  | 15d | 2026-04-28 | 2026-05-21 | 4 | 2d |  | Программист 2; Программист 3 | 240h | 75,000 |
| 6 | 2.4 | Разработа базы данных |  | 15d | 2026-04-14 | 2026-05-06 | 3 | 0d |  | Аналитик; Программист 1 | 240h | 97,500 |
| 7 | 2.5 | Заполнение базы данных |  | 12d | 2026-05-06 | 2026-05-25 | 6 | 0d |  | Наборщики данных | 96h | 21,000 |
| 8 | 3 | Программирование завершено | milestone | 0d | 2026-05-25 | 2026-05-25 | 5, 7 | 0d |  |  |  |  |
| 9 | 4 | **Тестирование и отладка** |  | 20d | 2026-05-18 | 2026-06-16 |  | 20d |  |  | 320h | 116,000 |
| 10 | 4.1 | Подготовка тестовых наборов данных |  | 5d | 2026-05-18 | 2026-05-25 | 8FS-5d | 20d | 0d | Программист 1; Программист 3 | 80h | 25,000 |
| 11 | 4.2 | Тестирование и исправление ошибок |  | 15d | 2026-05-25 | 2026-06-16 | 10 | 20d | 0d | Ведущий программист; Программист 2 | 240h | 90,000 |
| 12 | 5 | Отладка завершена | milestone | 0d | 2026-06-16 | 2026-06-16 | 11 | 20d |  |  |  |  |
| 13 | 6 | **Разработка документации** |  | 25d | 2026-06-08 | 2026-07-14 |  | 0d |  | Бумага [0.01 Пач]; Картриджи для принтера [0.01 Шт] | 200h | 56,500 |
| 14 | 6.1 | Составление программной документации |  | 10d | 2026-06-08 | 2026-06-23 | 8SS+10d | 0d |  | Технический писатель | 80h | 20,000 |
| 15 | 6.2 | Составление пользовательской документации |  | 15d | 2026-06-23 | 2026-07-14 | 14 | 0d |  | Технический писатель | 120h | 30,000 |
| 16 | 7 | Конец проекта | milestone | 0d | 2026-07-14 | 2026-07-14 | 15 | 0d |  |  |  |  |
