# Разработка карты города

Schedule from MS Project, 2026-03-02 to 2026-07-24, costs in ₽.
Карта должна создаваться на основе собственного моделя отображения. / Срок проекта: 6 месяцев / Бюджет проекта: 50000 рублей

## Calendars

- Стандартный: Mon-Fri 09:00-13:00, 14:00-18:00; Sat-Sun off. Exceptions (off unless hours are given): 2026-03-09 (Международный женский день), 2026-04-30 09:00-13:00, 14:00-17:00 (Апрель Сокр.), 2026-05-01 (1 Мая), 2026-05-08 09:00-13:00, 14:00-17:00 (Май Сокр.), 2026-05-11 (День победы), 2026-06-11 09:00-13:00, 14:00-17:00 (Июнь Сокр.), 2026-06-12 (День России).

## Resources

| Resource | Group | Rate | Cost per use |
| --- | --- | --- | --- |
| Ведущий программист | Программирование | 10 | 100 |
| Программист#1 | Программирование | 7 | 50 |
| Программист#2 | Программирование | 7 | 50 |
| Программист#3 | Программирование | 7 | 50 |
| Программист#4 | Программирование | 7 | 50 |
| Системный аналитик | Анализ | 20 | 300 |
| Художник-дизайнер | Дизайн | 8 | 70 |
| Технический писатель | Документация | 5 | 20 |
| Web-дизайнер | Internet | 7 | 50 |
| 3D аниматор | Дизайн | 8 | 70 |
| Мультимедиа-корреспондент | М-медиа | 3 | 20 |
| Ведущий наборщик данных | Ввод данных | 3 | 10 |
| Наборщик данных#2 | Ввод данных | 2 | 10 |
| Наборщик данных#3 | Ввод данных | 2 | 10 |
| Наборщик данных#4 | Ввод данных | 2 | 10 |
| Наборщик данных#5 | Ввод данных | 2 | 10 |
| Доп. Сервер | Сервер | 2 |  |
| Наборщик данных#6 | Ввод данных | 2 | 10 |
| Наборщик данных#7 | Ввод данных | 2 | 10 |
| Наборщик данных#8 | Ввод данных | 2 | 10 |
| Наборщик данных#9 | Ввод данных | 2 | 10 |
| Наборщик данных#10 | Ввод данных | 2 | 10 |
| Наборщик данных#11 | Ввод данных | 2 | 10 |
| Наборщик данных#12 | Ввод данных | 2 | 10 |
| Наборщик данных#13 | Ввод данных | 2 | 10 |
| Наборщик данных#14 | Ввод данных | 2 | 10 |
| Наборщик данных#15 | Ввод данных | 2 | 10 |

## Schedule

| ID | WBS | Task | Type | Duration | Start | Finish | Predecessors | Total slack | Free slack | Resources | Work | Cost |
| --- | --- | --- | --- | --- | --- | --- | --- | --- | --- | --- | --- | --- |
| 1 | 1 | Начало проекта | milestone | 0d | 2026-03-02 09:00 | 2026-03-02 09:00 |  | 0d |  |  |  |  |
| 2 | 2 | **Создание интерфейса** |  | 77.07d | 2026-03-02 09:00 | 2026-06-23 12:33 | 1 | 0d |  |  | 560h | 5,894 |
| 3 | 2.1 | **Разработка дизайна интерфейса** |  | 25.62d | 2026-03-02 09:00 | 2026-04-07 15:00 |  | 43.61d | 0d |  | 320h | 2,770 |
| 4 | 2.1.1 | Разработка 2D графических элементов |  | 3w | 2026-03-02 09:00 | 2026-03-24 12:00 |  | 44.38d | 0d | Художник-дизайнер | 120h | 1,030 |
| 5 | 2.1.2 | Разработка 3D графических элементов |  | 2w | 2026-03-02 09:00 | 2026-03-17 11:00 | 4SS | 44.38d | 0d | 3D аниматор | 80h | 710 |
| 6 | 2.1.3 | Создание заставки |  | 3w | 2026-03-17 11:00 | 2026-04-07 15:00 | 5 | 44.38d |  | 3D аниматор | 120h | 1,030 |
| 7 | 2.2 | Программирование интерфейса |  | 1.2w | 2026-06-15 12:33 | 2026-06-23 12:33 | 3, 12 | 0d |  | Программист#3; Программист#4; Программист#1; Программист#2; Ведущий программист | 240h | 2,124 |
| 8 | 3 | **Построение базы данных** |  | 45.12d | 2026-03-24 14:00 | 2026-05-28 17:00 | 1 | 39.23d |  | Доп. Сервер | 4283h | 12,916 |
| 9 | 3.1 | Анализ и построение структуры базы объектов |  | 2w | 2026-03-24 14:00 | 2026-04-07 15:00 |  | 39.23d | 0d | Системный аналитик | 80h | 1,900 |
| 10 | 3.2 | Программирование средств обработки базы объектов |  | 3w | 2026-04-07 15:00 | 2026-04-28 15:00 | 9 | 39.23d | 0d | Программист#3; Программист#4 | 240h | 1,780 |
| 11 | 3.3 | Наполнение базы объектов |  | 4w | 2026-04-28 15:00 | 2026-05-28 17:00 | 10 | 39.23d |  | Ведущий наборщик данных; Наборщик данных#2; Наборщик данных#3; Наборщик данных#4; Наборщик данных#5; Наборщик данных#6; Наборщик данных#7; Наборщик данных#8; Наборщик данных#9; Наборщик данных#10; Наборщик данных#11; Наборщик данных#12; Наборщик данных#13; Наборщик данных#14; Наборщик данных#15 | 2400h | 5,110 |
| 12 | 4 | **Создание ядра GIS** |  | 71.07d | 2026-03-02 09:00 | 2026-06-15 12:33 | 1 | 0d |  |  | 1880h | 18,189.56 |
| 13 | 4.1 | Анализ и проектирование ядра |  | 3.08w | 2026-03-02 09:00 | 2026-03-24 12:00 |  | 0d |  | Ведущий программист; Системный аналитик | 240h | 4,000 |
| 14 | 4.2 | Создание модели ядра |  | 3.39w | 2026-03-24 12:00 | 2026-04-16 11:32 | 13 | 0d |  | Ведущий программист; Программист#1; Программист#2 | 400h | 3,396.7 |
| 15 | 4.3 | Тестирование модели ядра |  | 0.5w | 2026-04-16 11:32 | 2026-04-20 16:32 | 14 | 0d |  | Программист#1; Программист#2 | 40h | 380 |
| 16 | 4.4 | Создание рабочей версии ядра |  | 7.25w | 2026-04-20 16:32 | 2026-06-15 12:33 | 15 | 0d |  | Ведущий программист; Программист#1; Программист#2; Программист#3; Программист#4 | 1200h | 9,412.87 |
| 17 | 5 | Создание мультимедиа-наполнения |  | 6w | 2026-04-07 15:00 | 2026-05-22 13:00 | 3 | 44.38d |  | Мультимедиа-корреспондент | 240h | 740 |
| 18 | 6 | Создание справочной системы |  | 2w | 2026-07-06 09:00 | 2026-07-20 11:00 | 7 | 4.75d |  | Технический писатель | 80h | 420 |
| 19 | 7 | **Создание руководства пользователя** |  | 17.25d | 2026-06-08 11:33 | 2026-07-02 15:33 | 7FS-10d | 0d |  |  | 160h | 1,010 |
| 20 | 7.1 | Разработка дизайна руководства |  | 1w | 2026-06-08 11:33 | 2026-06-16 12:33 |  | 0d |  | Художник-дизайнер | 40h | 390 |
| 21 | 7.2 | Написание руководства пользователя |  | 3w | 2026-06-10 11:33 | 2026-07-02 15:33 | 20SS+2d | 0d |  | Технический писатель | 120h | 620 |
| 22 | 8 | **Создание Web-сайта и поддержка** |  | 23.62d | 2026-06-10 11:33 | 2026-07-15 09:33 | 1 | 0d |  |  | 248h | 2,106 |
| 23 | 8.1 | Разработка структуры сайта |  | 1d | 2026-06-10 11:33 | 2026-06-11 11:33 | 21SS | 0d |  | Web-дизайнер | 8h | 106 |
| 24 | 8.2 | Разработка дизайна сайта |  | 1.45w | 2026-06-11 11:33 | 2026-06-23 15:33 | 23 | 0d |  | 3D аниматор; Web-дизайнер; Художник-дизайнер | 120h | 1,110 |
| 25 | 8.3 | Наполнение сайта |  | 3w | 2026-06-23 15:33 | 2026-07-15 09:33 | 24 | 0d |  | Web-дизайнер | 120h | 890 |
| 26 | 9 | Тестирование сайта |  | 2.43w | 2026-07-08 09:33 | 2026-07-24 10:51 | 22FS-1w | 0d |  | Ведущий программист; Программист#1; Программист#2; Программист#3; Программист#4 | 480h | 3,945.85 |
| 27 | 10 | Сдача сайта в эксплуатацию | milestone | 0d | 2026-07-24 10:51 | 2026-07-24 10:51 | 26, 8 | 0d |  |  |  |  |

| ID | WBS | Task | Type | Duration | Start | Finish | Total slack | Constraint | Resources | Work | Cost |
| --- | --- | --- | --- | --- | --- | --- | --- | --- | --- | --- | --- |
| 28 | 11 | **Совещание** |  | 95.75d | 2026-03-04 10:00 | 2026-07-22 11:00 | 0d |  |  | 147h | 1,281 |
| 29 | 11.1 | Совещание 1 | manual | 1h | 2026-03-04 10:00 | 2026-03-04 11:00 |  | start no earlier than 2026-03-04 10:00 | 3D аниматор; Web-дизайнер; Ведущий программист; Мультимедиа-корреспондент; Системный аналитик; Технический писатель; Художник-дизайнер | 7h | 61 |
| 30 | 11.2 | Совещание 2 | manual | 1h | 2026-03-11 10:00 | 2026-03-11 11:00 |  | start no earlier than 2026-03-11 10:00 | 3D аниматор; Web-дизайнер; Ведущий программист; Мультимедиа-корреспондент; Системный аналитик; Технический писатель; Художник-дизайнер | 7h | 61 |
| 31 | 11.3 | Совещание 3 | manual | 1h | 2026-03-18 10:00 | 2026-03-18 11:00 |  | start no earlier than 2026-03-18 10:00 | 3D аниматор; Web-дизайнер; Ведущий программист; Мультимедиа-корреспондент; Системный аналитик; Технический писатель; Художник-дизайнер | 7h | 61 |
| 32 | 11.4 | Совещание 4 | manual | 1h | 2026-03-25 10:00 | 2026-03-25 11:00 |  | start no earlier than 2026-03-25 10:00 | 3D аниматор; Web-дизайнер; Ведущий программист; Мультимедиа-корреспондент; Системный аналитик; Технический писатель; Художник-дизайнер | 7h | 61 |
| 33 | 11.5 | Совещание 5 | manual | 1h | 2026-04-01 10:00 | 2026-04-01 11:00 |  | start no earlier than 2026-04-01 10:00 | 3D аниматор; Web-дизайнер; Ведущий программист; Мультимедиа-корреспондент; Системный аналитик; Технический писатель; Художник-дизайнер | 7h | 61 |
| 34 | 11.6 | Совещание 6 | manual | 1h | 2026-04-08 10:00 | 2026-04-08 11:00 |  | start no earlier than 2026-04-08 10:00 | 3D аниматор; Web-дизайнер; Ведущий программист; Мультимедиа-корреспондент; Системный аналитик; Технический писатель; Художник-дизайнер | 7h | 61 |
| 35 | 11.7 | Совещание 7 | manual | 1h | 2026-04-15 10:00 | 2026-04-15 11:00 |  | start no earlier than 2026-04-15 10:00 | 3D аниматор; Web-дизайнер; Ведущий программист; Мультимедиа-корреспондент; Системный аналитик; Технический писатель; Художник-дизайнер | 7h | 61 |
| 36 | 11.8 | Совещание 8 | manual | 1h | 2026-04-22 10:00 | 2026-04-22 11:00 |  | start no earlier than 2026-04-22 10:00 | 3D аниматор; Web-дизайнер; Ведущий программист; Мультимедиа-корреспондент; Системный аналитик; Технический писатель; Художник-дизайнер | 7h | 61 |
| 37 | 11.9 | Совещание 9 | manual | 1h | 2026-04-29 10:00 | 2026-04-29 11:00 |  | start no earlier than 2026-04-29 10:00 | 3D аниматор; Web-дизайнер; Ведущий программист; Мультимедиа-корреспондент; Системный аналитик; Технический писатель; Художник-дизайнер | 7h | 61 |
| 38 | 11.10 | Совещание 10 | manual | 1h | 2026-05-06 10:00 | 2026-05-06 11:00 |  | start no earlier than 2026-05-06 10:00 | 3D аниматор; Web-дизайнер; Ведущий программист; Мультимедиа-корреспондент; Системный аналитик; Технический писатель; Художник-дизайнер | 7h | 61 |
| 39 | 11.11 | Совещание 11 | manual | 1h | 2026-05-13 10:00 | 2026-05-13 11:00 |  | start no earlier than 2026-05-13 10:00 | 3D аниматор; Web-дизайнер; Ведущий программист; Мультимедиа-корреспондент; Системный аналитик; Технический писатель; Художник-дизайнер | 7h | 61 |
| 40 | 11.12 | Совещание 12 | manual | 1h | 2026-05-20 10:00 | 2026-05-20 11:00 |  | start no earlier than 2026-05-20 10:00 | 3D аниматор; Web-дизайнер; Ведущий программист; Мультимедиа-корреспондент; Системный аналитик; Технический писатель; Художник-дизайнер | 7h | 61 |
| 41 | 11.13 | Совещание 13 | manual | 1h | 2026-05-27 10:00 | 2026-05-27 11:00 |  | start no earlier than 2026-05-27 10:00 | 3D аниматор; Web-дизайнер; Ведущий программист; Мультимедиа-корреспондент; Системный аналитик; Технический писатель; Художник-дизайнер | 7h | 61 |
| 42 | 11.14 | Совещание 14 | manual | 1h | 2026-06-03 10:00 | 2026-06-03 11:00 |  | start no earlier than 2026-06-03 10:00 | 3D аниматор; Web-дизайнер; Ведущий программист; Мультимедиа-корреспондент; Системный аналитик; Технический писатель; Художник-дизайнер | 7h | 61 |
| 43 | 11.15 | Совещание 15 | manual | 1h | 2026-06-10 10:00 | 2026-06-10 11:00 |  | start no earlier than 2026-06-10 10:00 | 3D аниматор; Web-дизайнер; Ведущий программист; Мультимедиа-корреспондент; Системный аналитик; Технический писатель; Художник-дизайнер | 7h | 61 |
| 44 | 11.16 | Совещание 16 | manual | 1h | 2026-06-17 10:00 | 2026-06-17 11:00 |  | start no earlier than 2026-06-17 10:00 | 3D аниматор; Web-дизайнер; Ведущий программист; Мультимедиа-корреспондент; Системный аналитик; Технический писатель; Художник-дизайнер | 7h | 61 |
| 45 | 11.17 | Совещание 17 | manual | 1h | 2026-06-24 10:00 | 2026-06-24 11:00 |  | start no earlier than 2026-06-24 10:00 | 3D аниматор; Web-дизайнер; Ведущий программист; Мультимедиа-корреспондент; Системный аналитик; Технический писатель; Художник-дизайнер | 7h | 61 |
| 46 | 11.18 | Совещание 18 | manual | 1h | 2026-07-01 10:00 | 2026-07-01 11:00 |  | start no earlier than 2026-07-01 10:00 | 3D аниматор; Web-дизайнер; Ведущий программист; Мультимедиа-корреспондент; Системный аналитик; Технический писатель; Художник-дизайнер | 7h | 61 |
| 47 | 11.19 | Совещание 19 | manual | 1h | 2026-07-08 10:00 | 2026-07-08 11:00 |  | start no earlier than 2026-07-08 10:00 | 3D аниматор; Web-дизайнер; Ведущий программист; Мультимедиа-корреспондент; Системный аналитик; Технический писатель; Художник-дизайнер | 7h | 61 |
| 48 | 11.20 | Совещание 20 | manual | 1h | 2026-07-15 10:00 | 2026-07-15 11:00 |  | start no earlier than 2026-07-15 10:00 | 3D аниматор; Web-дизайнер; Ведущий программист; Мультимедиа-корреспондент; Системный аналитик; Технический писатель; Художник-дизайнер | 7h | 61 |
| 49 | 11.21 | Совещание 21 | manual | 1h | 2026-07-22 10:00 | 2026-07-22 11:00 |  | start no earlier than 2026-07-22 10:00 | 3D аниматор; Web-дизайнер; Ведущий программист; Мультимедиа-корреспондент; Системный аналитик; Технический писатель; Художник-дизайнер | 7h | 61 |
