# Разработка карты города

Schedule from MS Project, 2026-03-02 to 2026-08-03, status date 2026-05-15, costs in ₽, A marks actual dates.
Карта должна создаваться на основе собственного моделя отображения. / Срок проекта: 6 месяцев / Бюджет проекта: 50000 рублей

## Calendars

- Стандартный: Mon-Fri 09:00-13:00, 14:00-18:00; Sat-Sun off. Exceptions (off unless hours are given): 2026-03-09 (Международный женский день), 2026-04-30 09:00-13:00, 14:00-17:00 (Апрель Сокр.), 2026-05-01 (1 Мая), 2026-05-08 09:00-13:00, 14:00-17:00 (Май Сокр.), 2026-05-11 (День победы), 2026-06-11 09:00-13:00, 14:00-17:00 (Июнь Сокр.), 2026-06-12 (День России).

## Resources

| Resource | Group | Rate | Cost per use |
| --- | --- | --- | --- |
| Ведущий программист | Программирование | 10 | 100 |
| Программист#1 | Программирование | 7 | 50 |
| Программист#2 | Программирование | 7 | 50 |
| Программист#3 | Программирование | 7 | 50 |
| Программист#4 | Программирование | 7 | 50 |
| Системный аналитик | Анализ | 20 | 300 |
| Художник-дизайнер | Дизайн | 8.8 | 70 |
| Технический писатель | Документация | 5 | 20 |
| Web-дизайнер | Internet | 7 | 50 |
| 3D аниматор | Дизайн | 8 | 70 |
| Мультимедиа-корреспондент | М-медиа | 3 | 20 |
| Ведущий наборщик данных | Ввод данных | 3 | 10 |
| Наборщик данных#2 | Ввод данных | 2 | 10 |
| Наборщик данных#3 | Ввод данных | 2 | 10 |
| Наборщик данных#4 | Ввод данных | 2 | 10 |
| Наборщик данных#5 | Ввод данных | 2 | 10 |
| Доп. Сервер | Сервер | 2 |  |
| Наборщик данных#6 | Ввод данных | 2 | 10 |
| Наборщик данных#7 | Ввод данных | 2 | 10 |
| Наборщик данных#8 | Ввод данных | 2 | 10 |
| Наборщик данных#9 | Ввод данных | 2 | 10 |
| Наборщик данных#10 | Ввод данных | 2 | 10 |
| Наборщик данных#11 | Ввод данных | 2 | 10 |
| Наборщик данных#12 | Ввод данных | 2 | 10 |
| Наборщик данных#13 | Ввод данных | 2 | 10 |
| Наборщик данных#14 | Ввод данных | 2 | 10 |
| Наборщик данных#15 | Ввод данных | 2 | 10 |
| Художник-дизайнер (Замена) | Дизайн | 8.8 | 70 |
| Стажёр-программист |  | 3 |  |
| Специализированное ПО |  | 2.5 | 100 |
| Собственный сервер |  | 0.05 | 4000 |

## Schedule

| ID | WBS | Task | Type | Duration | Start | Finish | Predecessors | Complete | Remaining | Baseline start | Baseline finish | Baseline duration | Total slack | Free slack | Resources | Work | Actual work | Cost | Baseline cost | Actual cost |
| --- | --- | --- | --- | --- | --- | --- | --- | --- | --- | --- | --- | --- | --- | --- | --- | --- | --- | --- | --- | --- |
| 1 | 1 | Начало проекта | milestone | 0d | 2026-03-02 09:00 A | 2026-03-02 09:00 A |  | 100% |  | 2026-03-02 09:00 | 2026-03-02 09:00 | 0d |  |  |  |  |  |  |  |  |
| 2 | 2 | **Создание интерфейса** |  | 74.14d | 2026-03-02 09:00 A | 2026-06-18 14:07 | 1 | 86% | 10.35d | 2026-03-02 09:00 | 2026-06-23 12:33 | 77.07d | 0.96d |  |  | 560h | 320h | 6,050.68 | 5,894 | 3,707.68 |
| 3 | 2.1 | **Разработка дизайна интерфейса** |  | 33.5d | 2026-03-02 09:00 A | 2026-04-17 13:00 A |  | 100% |  | 2026-03-02 09:00 | 2026-04-07 15:00 | 25.62d |  |  |  | 320h | 320h | 2,847.68 | 2,770 | 2,847.68 |
| 4 | 2.1.1 | Разработка 2D графических элементов |  | 3w | 2026-03-02 09:00 A | 2026-03-26 10:24 A |  | 100% |  | 2026-03-02 09:00 | 2026-03-24 12:00 | 3w |  |  | Художник-дизайнер | 120h | 120h | 1,080.88 | 1,030 | 1,080.88 |
| 5 | 2.1.2 | Разработка 3D графических элементов |  | 3.4w | 2026-03-02 09:00 A | 2026-03-26 10:00 A | 4SS | 100% |  | 2026-03-02 09:00 | 2026-03-17 11:00 | 2w |  |  | 3D аниматор; Художник-дизайнер (Замена) [20%] | 80h | 80h | 736.8 | 710 | 736.8 |
| 6 | 2.1.3 | Создание заставки |  | 3w | 2026-03-27 11:00 A | 2026-04-17 13:00 A | 5 | 100% |  | 2026-03-17 11:00 | 2026-04-07 15:00 | 3w |  |  | 3D аниматор | 120h | 120h | 1,030 | 1,030 | 1,030 |
| 7 | 2.2 | Программирование интерфейса |  | 1.52w | 2026-06-08 14:07 | 2026-06-18 14:07 | 3, 12 |  |  | 2026-06-15 12:33 | 2026-06-23 12:33 | 1.2w | 0.96d | 0d | Программист#3; Программист#1; Программист#2; Ведущий программист | 240h |  | 2,203 | 2,124 |  |
| 8 | 3 | **Построение базы данных** |  | 90.42d | 2026-03-24 14:00 A | 2026-08-03 11:22 | 1 | 36% | 58.1d | 2026-03-24 14:00 | 2026-05-28 17:00 | 45.12d | 0d |  | Доп. Сервер; Собственный сервер | 5870.37h | 724h | 14,366.92 | 12,916 | 6,998.48 |
| 9 | 3.1 | Анализ и построение структуры базы объектов |  | 2w | 2026-03-24 14:00 A | 2026-04-07 15:00 A |  | 100% |  | 2026-03-24 14:00 | 2026-04-07 15:00 | 2w |  |  | Системный аналитик | 80h | 80h | 1,900 | 1,900 | 1,900 |
| 10 | 3.2 | Программирование средств обработки базы объектов |  | 4.69w | 2026-04-07 15:00 A | 2026-07-06 11:22 | 9 | 39% | 2.87w | 2026-04-07 15:00 | 2026-04-28 15:00 | 3w | 0d |  | Программист#3; Программист#1 | 240h | 72.84h | 1,864 | 1,780 | 635.39 |
| 11 | 3.3 | Наполнение базы объектов |  | 4w | 2026-07-06 11:22 | 2026-08-03 11:22 | 10 |  |  | 2026-04-28 15:00 | 2026-05-28 17:00 | 4w | 0d |  | Ведущий наборщик данных; Наборщик данных#2; Наборщик данных#3; Наборщик данных#4; Наборщик данных#5; Наборщик данных#6; Наборщик данных#7; Наборщик данных#8; Наборщик данных#9; Наборщик данных#10; Наборщик данных#11; Наборщик данных#12; Наборщик данных#13; Наборщик данных#14; Наборщик данных#15 | 2400h |  | 5,110 | 5,110 |  |
| 12 | 4 | **Создание ядра GIS** |  | 67.27d | 2026-03-02 09:00 A | 2026-06-08 14:07 | 1 | 76% | 16.22d | 2026-03-02 09:00 | 2026-06-15 12:33 | 71.07d | 0.96d | 0d |  | 1880h | 1337.85h | 18,871.36 | 18,189.56 | 14,216.06 |
| 13 | 4.1 | Анализ и проектирование ядра |  | 3.08w | 2026-03-02 09:00 A | 2026-03-24 12:00 A |  | 100% |  | 2026-03-02 09:00 | 2026-03-24 12:00 | 3.08w |  |  | Ведущий программист; Системный аналитик | 240h | 240h | 4,000 | 4,000 | 4,000 |
| 14 | 4.2 | Создание модели ядра |  | 3.39w | 2026-03-24 12:00 A | 2026-04-15 09:32 A | 13 | 100% |  | 2026-03-24 12:00 | 2026-04-16 11:32 | 3.39w |  |  | Ведущий программист; Программист#1; Программист#2 | 400h | 400h | 3,503.03 | 3,396.7 | 3,503.03 |
| 15 | 4.3 | Тестирование модели ядра |  | 0.42w | 2026-04-15 09:32 A | 2026-04-17 09:32 A | 14 | 100% |  | 2026-04-16 11:32 | 2026-04-20 16:32 | 0.5w |  |  | Программист#1; Программист#2; Стажёр-программист [50%] | 40h | 40h | 359.2 | 380 | 359.2 |
| 16 | 4.4 | Создание рабочей версии ядра |  | 7.64w | 2026-04-17 09:32 A | 2026-06-08 14:07 | 15 | 54% | 3.5w | 2026-04-20 16:32 | 2026-06-15 12:33 | 7.25w | 0.96d |  | Ведущий программист; Программист#1; Программист#2; Программист#3 | 1200h | 657.85h | 10,009.13 | 9,412.87 | 5,593.83 |
| 17 | 5 | Создание мультимедиа-наполнения |  | 6w | 2026-04-17 14:00 A | 2026-06-03 13:00 | 3 | 59% | 2.45w | 2026-04-07 15:00 | 2026-05-22 13:00 | 6w | 41.67d |  | Мультимедиа-корреспондент; Специализированное ПО | 480h | 284h | 1,512 | 740 | 943.6 |
| 18 | 6 | Создание справочной системы |  | 2w | 2026-06-30 09:07 | 2026-07-14 10:07 | 7 |  |  | 2026-07-06 09:00 | 2026-07-20 11:00 | 2w | 14.16d |  | Технический писатель | 80h |  | 420 | 420 |  |
| 19 | 7 | **Создание руководства пользователя** |  | 17.38d | 2026-06-03 12:07 | 2026-06-29 17:07 | 7FS-10d |  |  | 2026-06-08 11:33 | 2026-07-02 15:33 | 17.25d | 0.96d |  |  | 160h |  | 1,010 | 1,010 |  |
| 20 | 7.1 | Разработка дизайна руководства |  | 1w | 2026-06-03 12:07 | 2026-06-10 12:07 |  |  |  | 2026-06-08 11:33 | 2026-06-16 12:33 | 1w | 0.96d | 0d | Художник-дизайнер | 40h |  | 390 | 390 |  |
| 21 | 7.2 | Написание руководства пользователя |  | 3w | 2026-06-05 12:07 | 2026-06-29 17:07 | 20SS+2d |  |  | 2026-06-10 11:33 | 2026-07-02 15:33 | 3w | 0.96d | 0d | Технический писатель | 120h |  | 620 | 620 |  |
| 22 | 8 | **Создание Web-сайта и поддержка** |  | 23.38d | 2026-06-05 12:07 | 2026-07-09 17:07 | 1 |  |  | 2026-06-10 11:33 | 2026-07-15 09:33 | 23.62d | 0.96d | 0d |  | 248h |  | 2,106 | 2,106 |  |
| 23 | 8.1 | Разработка структуры сайта |  | 1d | 2026-06-05 12:07 | 2026-06-08 12:07 | 21SS |  |  | 2026-06-10 11:33 | 2026-06-11 11:33 | 1d | 0.96d | 0d | Web-дизайнер | 8h |  | 106 | 106 |  |
| 24 | 8.2 | Разработка дизайна сайта |  | 1.43w | 2026-06-08 12:07 | 2026-06-18 15:07 | 23 |  |  | 2026-06-11 11:33 | 2026-06-23 15:33 | 1.45w | 0.96d | 0d | 3D аниматор; Web-дизайнер; Художник-дизайнер | 120h |  | 1,110 | 1,110 |  |
| 25 | 8.3 | Наполнение сайта |  | 3w | 2026-06-18 15:07 | 2026-07-09 17:07 | 24 |  |  | 2026-06-23 15:33 | 2026-07-15 09:33 | 3w | 0.96d |  | Web-дизайнер | 120h |  | 890 | 890 |  |
| 26 | 9 | Тестирование сайта |  | 4.41w | 2026-07-02 17:07 | 2026-07-31 11:41 | 22FS-1w |  |  | 2026-07-08 09:33 | 2026-07-24 10:51 | 2.43w | 0.96d |  | Ведущий программист; Программист#1; Программист#2; Программист#3; Стажёр-программист [50%] | 480h |  | 3,734.41 | 3,945.85 |  |
| 27 | 10 | Сдача сайта в эксплуатацию | milestone | 0d | 2026-08-03 11:22 | 2026-08-03 11:22 | 26, 8 |  |  | 2026-07-24 10:51 | 2026-07-24 10:51 | 0d | 0d |  |  |  |  |  |  |  |

| ID | WBS | Task | Type | Duration | Start | Finish | Complete | Remaining | Baseline start | Baseline finish | Baseline duration | Total slack | Constraint | Resources | Work | Actual work | Cost | Baseline cost | Actual cost |
| --- | --- | --- | --- | --- | --- | --- | --- | --- | --- | --- | --- | --- | --- | --- | --- | --- | --- | --- | --- |
| 28 | 11 | **Совещание** |  | 95.75d | 2026-03-04 10:00 A | 2026-07-22 11:00 | 52% | 45.6d | 2026-03-04 10:00 | 2026-07-22 11:00 | 95.75d | 0d |  |  | 74h | 44h | 601 | 1,281 | 385 |
| 29 | 11.1 | Совещание 1 | manual | 1h | 2026-03-04 10:00 A | 2026-03-04 11:00 A | 100% |  | 2026-03-04 10:00 | 2026-03-04 11:00 | 1h |  | start no earlier than 2026-03-04 10:00 | 3D аниматор; Web-дизайнер; Ведущий программист; Мультимедиа-корреспондент; Системный аналитик; Технический писатель; Художник-дизайнер | 7h | 7h | 61 | 61 | 61 |
| 30 | 11.2 | Совещание 2 | manual | 1h | 2026-03-11 10:00 A | 2026-03-11 11:00 | 99% | 0h | 2026-03-11 10:00 | 2026-03-11 11:00 | 1h |  | start no earlier than 2026-03-11 10:00 | 3D аниматор; Web-дизайнер; Ведущий программист; Мультимедиа-корреспондент; Системный аналитик; Технический писатель; Художник-дизайнер | 6h | 6h | 53 | 61 | 53 |
| 31 | 11.3 | Совещание 3 | manual | 1h | 2026-03-18 10:00 A | 2026-03-18 11:00 | 99% | 0h | 2026-03-18 10:00 | 2026-03-18 11:00 | 1h |  | start no earlier than 2026-03-18 10:00 | 3D аниматор; Web-дизайнер; Ведущий программист; Мультимедиа-корреспондент; Системный аналитик; Технический писатель; Художник-дизайнер | 6h | 6h | 53 | 61 | 53 |
| 32 | 11.4 | Совещание 4 | manual | 1h | 2026-03-25 10:00 A | 2026-03-25 11:00 A | 100% |  | 2026-03-25 10:00 | 2026-03-25 11:00 | 1h |  | start no earlier than 2026-03-25 10:00 | 3D аниматор; Web-дизайнер; Ведущий программист; Мультимедиа-корреспондент; Системный аналитик; Технический писатель; Художник-дизайнер | 7h | 7h | 61 | 61 | 61 |
| 33 | 11.5 | Совещание 5 | manual | 1h | 2026-04-01 10:00 A | 2026-04-01 11:00 | 99% | 0h | 2026-04-01 10:00 | 2026-04-01 11:00 | 1h |  | start no earlier than 2026-04-01 10:00 | 3D аниматор; Web-дизайнер; Ведущий программист; Мультимедиа-корреспондент; Системный аналитик; Технический писатель; Художник-дизайнер | 4h | 4h | 46 | 61 | 46 |
| 34 | 11.6 | Совещание 6 | manual | 1h | 2026-04-08 10:00 A | 2026-04-08 11:00 | 99% | 0h | 2026-04-08 10:00 | 2026-04-08 11:00 | 1h |  | start no earlier than 2026-04-08 10:00 | 3D аниматор; Web-дизайнер; Ведущий программист; Мультимедиа-корреспондент; Системный аналитик; Технический писатель; Художник-дизайнер | 3h | 3h | 38 | 61 | 38 |
| 35 | 11.7 | Совещание 7 | manual | 1h | 2026-04-15 10:00 A | 2026-04-15 11:00 | 99% | 0h | 2026-04-15 10:00 | 2026-04-15 11:00 | 1h |  | start no earlier than 2026-04-15 10:00 | 3D аниматор; Web-дизайнер; Ведущий программист; Мультимедиа-корреспондент; Системный аналитик; Технический писатель; Художник-дизайнер | 3h | 3h | 21 | 61 | 21 |
| 36 | 11.8 | Совещание 8 | manual | 1h | 2026-04-22 10:00 A | 2026-04-22 11:00 | 99% | 0h | 2026-04-22 10:00 | 2026-04-22 11:00 | 1h |  | start no earlier than 2026-04-22 10:00 | 3D аниматор; Web-дизайнер; Ведущий программист; Мультимедиа-корреспондент; Системный аналитик; Технический писатель; Художник-дизайнер | 2h | 2h | 13 | 61 | 13 |
| 37 | 11.9 | Совещание 9 | manual | 1h | 2026-04-29 10:00 A | 2026-04-29 11:00 | 99% | 0h | 2026-04-29 10:00 | 2026-04-29 11:00 | 1h |  | start no earlier than 2026-04-29 10:00 | 3D аниматор; Web-дизайнер; Ведущий программист; Мультимедиа-корреспондент; Системный аналитик; Технический писатель; Художник-дизайнер | 2h | 2h | 13 | 61 | 13 |
| 38 | 11.10 | Совещание 10 | manual | 1h | 2026-05-06 10:00 A | 2026-05-06 11:00 | 99% | 0h | 2026-05-06 10:00 | 2026-05-06 11:00 | 1h |  | start no earlier than 2026-05-06 10:00 | 3D аниматор; Web-дизайнер; Ведущий программист; Мультимедиа-корреспондент; Системный аналитик; Технический писатель; Художник-дизайнер | 2h | 2h | 13 | 61 | 13 |
| 39 | 11.11 | Совещание 11 | manual | 1h | 2026-05-13 10:00 A | 2026-05-13 11:00 | 99% | 0h | 2026-05-13 10:00 | 2026-05-13 11:00 | 1h |  | start no earlier than 2026-05-13 10:00 | 3D аниматор; Web-дизайнер; Ведущий программист; Мультимедиа-корреспондент; Системный аналитик; Технический писатель; Художник-дизайнер | 2h | 2h | 13 | 61 | 13 |
| 40 | 11.12 | Совещание 12 | manual | 1h | 2026-05-20 10:00 | 2026-05-20 11:00 |  |  | 2026-05-20 10:00 | 2026-05-20 11:00 | 1h |  | start no earlier than 2026-05-20 10:00 | 3D аниматор; Web-дизайнер; Ведущий программист; Мультимедиа-корреспондент; Системный аналитик; Технический писатель; Художник-дизайнер | 2h |  | 13 | 61 |  |
| 41 | 11.13 | Совещание 13 | manual | 1h | 2026-05-27 10:00 | 2026-05-27 11:00 |  |  | 2026-05-27 10:00 | 2026-05-27 11:00 | 1h |  | start no earlier than 2026-05-27 10:00 | 3D аниматор; Web-дизайнер; Ведущий программист; Мультимедиа-корреспондент; Системный аналитик; Технический писатель; Художник-дизайнер | 2h |  | 13 | 61 |  |
| 42 | 11.14 | Совещание 14 | manual | 1h | 2026-06-03 10:00 | 2026-06-03 11:00 |  |  | 2026-06-03 10:00 | 2026-06-03 11:00 | 1h |  | start no earlier than 2026-06-03 10:00 | 3D аниматор; Web-дизайнер; Ведущий программист; Мультимедиа-корреспондент; Системный аналитик; Технический писатель; Художник-дизайнер | 5h |  | 33 | 61 |  |
| 43 | 11.15 | Совещание 15 | manual | 1h | 2026-06-10 10:00 | 2026-06-10 11:00 |  |  | 2026-06-10 10:00 | 2026-06-10 11:00 | 1h |  | start no earlier than 2026-06-10 10:00 | 3D аниматор; Web-дизайнер; Ведущий программист; Мультимедиа-корреспондент; Системный аналитик; Технический писатель; Художник-дизайнер | 5h |  | 38 | 61 |  |
| 44 | 11.16 | Совещание 16 | manual | 1h | 2026-06-17 10:00 | 2026-06-17 11:00 |  |  | 2026-06-17 10:00 | 2026-06-17 11:00 | 1h |  | start no earlier than 2026-06-17 10:00 | 3D аниматор; Web-дизайнер; Ведущий программист; Мультимедиа-корреспондент; Системный аналитик; Технический писатель; Художник-дизайнер | 5h |  | 38 | 61 |  |
| 45 | 11.17 | Совещание 17 | manual | 1h | 2026-06-24 10:00 | 2026-06-24 11:00 |  |  | 2026-06-24 10:00 | 2026-06-24 11:00 | 1h |  | start no earlier than 2026-06-24 10:00 | 3D аниматор; Web-дизайнер; Ведущий программист; Мультимедиа-корреспондент; Системный аналитик; Технический писатель; Художник-дизайнер | 2h |  | 12 | 61 |  |
| 46 | 11.18 | Совещание 18 | manual | 1h | 2026-07-01 10:00 | 2026-07-01 11:00 |  |  | 2026-07-01 10:00 | 2026-07-01 11:00 | 1h |  | start no earlier than 2026-07-01 10:00 | 3D аниматор; Web-дизайнер; Ведущий программист; Мультимедиа-корреспондент; Системный аналитик; Технический писатель; Художник-дизайнер | 3h |  | 22 | 61 |  |
| 47 | 11.19 | Совещание 19 | manual | 1h | 2026-07-08 10:00 | 2026-07-08 11:00 |  |  | 2026-07-08 10:00 | 2026-07-08 11:00 | 1h |  | start no earlier than 2026-07-08 10:00 | 3D аниматор; Web-дизайнер; Ведущий программист; Мультимедиа-корреспондент; Системный аналитик; Технический писатель; Художник-дизайнер | 3h |  | 22 | 61 |  |
| 48 | 11.20 | Совещание 20 | manual | 1h | 2026-07-15 10:00 | 2026-07-15 11:00 |  |  | 2026-07-15 10:00 | 2026-07-15 11:00 | 1h |  | start no earlier than 2026-07-15 10:00 | 3D аниматор; Web-дизайнер; Ведущий программист; Мультимедиа-корреспондент; Системный аналитик; Технический писатель; Художник-дизайнер | 2h |  | 15 | 61 |  |
| 49 | 11.21 | Совещание 21 | manual | 1h | 2026-07-22 10:00 | 2026-07-22 11:00 |  |  | 2026-07-22 10:00 | 2026-07-22 11:00 | 1h |  | start no earlier than 2026-07-22 10:00 | 3D аниматор; Web-дизайнер; Ведущий программист; Мультимедиа-корреспондент; Системный аналитик; Технический писатель; Художник-дизайнер | 1h |  | 10 | 61 |  |
