# Разработка карты города

Schedule from MS Project, 2026-03-02 to 2026-11-16, costs in ₽.
Карта должна создаваться на основе собственного моделя отображения. / Срок проекта: 6 месяцев / Бюджет проекта: 50000 рублей

## Calendars

- Стандартный: Mon-Fri 09:00-13:00, 14:00-18:00; Sat-Sun off. Exceptions (off unless hours are given): 2026-03-09 (Международный женский день), 2026-04-30 09:00-13:00, 14:00-17:00 (Апрель Сокр.), 2026-05-01 (1 Мая), 2026-05-08 09:00-13:00, 14:00-17:00 (Май Сокр.), 2026-05-11 (День победы), 2026-06-11 09:00-13:00, 14:00-17:00 (Июнь Сокр.), 2026-06-12 (День России), 2026-11-04 (День народного единства).

## Resources

| Resource | Group | Rate | Cost per use |
| --- | --- | --- | --- |
| Ведущий программист | Программирование | 10 | 100 |
| Программист#1 | Программирование | 7 | 50 |
| Программист#2 | Программирование | 7 | 50 |
| Программист#3 | Программирование | 7 | 50 |
| Программист#4 | Программирование | 7 | 50 |
| Системный аналитик | Анализ | 20 | 300 |
| Художник-дизайнер | Дизайн | 8 | 70 |
| Технический писатель | Документация | 5 | 20 |
| Web-дизайнер | Internet | 7 | 50 |
| 3D аниматор | Дизайн | 8 | 70 |
| Мультимедиа-корреспондент | М-медиа | 3 | 20 |
| Наборщик данных#1 | Ввод данных | 2 | 10 |
| Наборщик данных#2 | Ввод данных | 2 | 10 |
| Наборщик данных#3 | Ввод данных | 2 | 10 |
| Наборщик данных#4 | Ввод данных | 2 | 10 |
| Наборщик данных#5 | Ввод данных | 2 | 10 |
| Доп. Сервер | Сервер | 2 |  |

## Schedule

| ID | WBS | Task | Type | Duration | Start | Finish | Predecessors | Total slack | Free slack | Resources | Work | Cost |
| --- | --- | --- | --- | --- | --- | --- | --- | --- | --- | --- | --- | --- |
| 1 | 1 | Начало проекта | milestone | 0d | 2026-03-02 | 2026-03-02 |  | 180d |  |  |  |  |
| 2 | 2 | **Анализ** |  | 10d | 2026-03-02 | 2026-03-16 |  | 0d |  |  | 120h | 2,700 |
| 3 | 2.1 | Анализ требований к системе |  | 1w | 2026-03-02 | 2026-03-06 |  | 0d |  | Ведущий программист; Системный аналитик | 80h | 1,600 |
| 4 | 2.2 | Анализ требований к объектам карты | manual | 1w | 2026-03-10 | 2026-03-16 | 3 |  |  | Системный аналитик | 40h | 1,100 |
| 5 | 3 | **Проектирование** |  | 10d | 2026-03-17 | 2026-03-30 | 2 | 0d |  |  | 368h | 5,506 |
| 6 | 3.1 | Проектирование базы объектов |  | 1w | 2026-03-17 | 2026-03-23 |  | 5d |  | Системный аналитик | 40h | 1,100 |
| 7 | 3.2 | Проектирования ядра системы |  | 2w | 2026-03-17 | 2026-03-30 |  | 0d |  | Ведущий программист; Системный аналитик | 160h | 2,800 |
| 8 | 3.3 | Проектирование сайта |  | 1d | 2026-03-17 | 2026-03-17 |  | 4d | 0d | Web-дизайнер | 8h | 106 |
| 9 | 3.4 | Дизайн сайта |  | 1w | 2026-03-18 | 2026-03-24 | 8 | 4d |  | 3D аниматор; Web-дизайнер; Художник-дизайнер | 120h | 1,110 |
| 10 | 3.5 | Дизайн руководства |  | 1w | 2026-03-17 | 2026-03-23 |  | 5d |  | Художник-дизайнер | 40h | 390 |
| 11 | 4 | **Разработка** |  | 80d | 2026-03-31 | 2026-07-24 | 5 | 0d |  |  | 3049h | 24,608 |
| 12 | 4.1 | **Графика** |  | 25d | 2026-03-31 | 2026-05-06 |  | 28d | 0d |  | 320h | 3,770 |
| 13 | 4.1.1 | 2D элементы |  | 3w | 2026-03-31 | 2026-04-20 |  | 28d | 0d | Художник-дизайнер | 120h | 1,030 |
| 14 | 4.1.2 | 3D элементы |  | 2w | 2026-03-31 | 2026-04-13 | 13SS | 28d | 0d | 3D аниматор | 80h | 710 |
| 15 | 4.1.3 | Заставка |  | 3w | 2026-04-14 | 2026-05-06 | 14 | 28d |  | 3D аниматор | 120h | 1,030 |
| 16 | 4.2 | Сайт |  | 3w | 2026-05-06 | 2026-05-28 | 12 | 28d | 0d | Программист#3; Программист#4 | 240h | 1,780 |
| 17 | 4.3 | Руководство пользователя |  | 3w | 2026-05-25 | 2026-06-16 | 16FS-3d | 28d |  | Технический писатель | 120h | 620 |
| 18 | 4.4 | **Ядро** |  | 80d | 2026-03-31 | 2026-07-24 |  | 0d |  |  | 1640h | 14,680 |
| 19 | 4.4.1 | Прототип |  | 5w | 2026-03-31 | 2026-05-06 |  | 0d |  | Ведущий программист; Программист#1 | 400h | 3,550 |
| 20 | 4.4.2 | Проверка прототипа |  | 1w | 2026-05-06 | 2026-05-14 | 19 | 0d |  | Программист#1 | 40h | 330 |
| 21 | 4.4.3 | Полная версия |  | 10w | 2026-05-14 | 2026-07-24 | 20 | 0d |  | Ведущий программист; Программист#1; Программист#2 | 1200h | 9,800 |
| 22 | 4.5 | **База объектов** |  | 15d | 2026-03-31 | 2026-04-20 |  | 65d |  | Доп. Сервер | 729h | 3,758 |
| 23 | 4.5.1 | Средства обработки |  | 3w | 2026-03-31 | 2026-04-20 |  | 65d |  | Программист#3; Программист#4 | 240h | 1,780 |
| 24 | 5 | **Тестирование** |  | 20d | 2026-07-24 | 2026-08-21 | 11 | 0d |  |  | 480h | 4,040 |
| 25 | 5.1 | Сайт |  | 4w | 2026-07-24 | 2026-08-21 |  | 0d |  | Ведущий программист; Программист#1; Программист#2 | 480h | 4,040 |

| ID | WBS | Task | Type | Duration | Start | Finish | Predecessors | Total slack | Resources | Work | Cost |
| --- | --- | --- | --- | --- | --- | --- | --- | --- | --- | --- | --- |
| 26 | 6 | **Сопровождение** |  | 60d | 2026-08-21 | 2026-11-16 | 24 | 0d |  | 4928h | 11,076 |
| 27 | 6.1 | Наполнение базы объектов |  | 12w | 2026-08-21 | 2026-11-16 |  | 0d | Доп. Сервер; Наборщик данных#1; Наборщик данных#2; Наборщик данных#3; Наборщик данных#4; Наборщик данных#5 | 4488h | 9,026 |
| 28 | 6.2 | Наполнение сайта |  | 3w | 2026-08-21 | 2026-09-11 |  | 45d | Web-дизайнер | 120h | 890 |
| 29 | 6.3 | Справочная система |  | 2w | 2026-08-21 | 2026-09-04 |  | 50d | Технический писатель | 80h | 420 |
| 30 | 6.4 | Мультимедиа-наполнение |  | 6w | 2026-08-21 | 2026-10-02 |  | 30d | Мультимедиа-корреспондент | 240h | 740 |
| 31 | 7 | Сдача сайта в эксплуатацию | milestone, manual | 0d | 2026-11-16 | 2026-11-16 | 26 |  |  |  |  |
